# gantt

How a schedule from MS Project changed from version to version. A marks actual dates.

## Version 1 (saved 2017-01-27)

Note of the change: gantt chart

| ID | WBS | Task | Duration | Start | Finish | Predecessors | Total float |
| --- | --- | --- | --- | --- | --- | --- | --- |
| 1 |  | Introduction | 0d | 2017-01-26 | 2017-01-26 |  | 75d |
| 2 | 2 | **Spring** | 75d | 2017-01-26 | 2017-04-11 |  | 0d |
| 3 | 2.1 | **Data** | 17d | 2017-01-26 | 2017-02-12 |  | 0d |
| 4 |  | Acquisition | 14d | 2017-01-26 | 2017-02-09 |  | 0d |
| 5 |  | Processing | 3d | 2017-02-09 | 2017-02-12 | 4 | 0d |
| 6 | 2.2 | **Research** | 26d | 2017-01-26 | 2017-02-21 |  | 0d |
| 7 | 2.2.1 | **OpenDSS** | 12d | 2017-01-26 | 2017-02-07 |  | 0d |
| 8 |  | Primer | 5d | 2017-01-26 | 2017-01-31 |  | 0d |
| 9 |  | Storage | 7d | 2017-01-31 | 2017-02-07 | 8 | 0d |
| 10 | 2.2.2 | **BES Management Schemes** | 7d | 2017-01-31 | 2017-02-07 | 8 | 0d |
| 11 |  | PV Firming | 7d | 2017-01-31 | 2017-02-07 |  | 0d |
| 12 |  | Energy Time Shift | 7d | 2017-01-31 | 2017-02-07 |  | 0d |
| 13 |  | Peak Demand Reduction | 7d | 2017-01-31 | 2017-02-07 |  | 0d |
| 14 | 2.2.3 | **Batteries** | 14d | 2017-02-07 | 2017-02-21 | 10, 7 | 0d |
| 15 |  | BES Technology | 14d | 2017-02-07 | 2017-02-21 |  | 0d |
| 16 |  | Price/Performance | 14d | 2017-02-07 | 2017-02-21 |  | 0d |
| 17 | 2.3 | **Model** | 35d | 2017-01-31 | 2017-03-07 |  | 12d |
| 18 | 2.3.1 | **Sample Circuit** | 2d | 2017-01-31 | 2017-02-02 | 8 | 61d |
| 19 |  | Static Powerflow | 1d | 2017-01-31 | 2017-02-01 |  | 61d |
| 20 |  | Quasistatic Time Series | 1d | 2017-02-01 | 2017-02-02 | 19 | 61d |
| 21 | 2.3.2 | **Actual Circuit** | 23d | 2017-02-12 | 2017-03-07 |  | 0d |
| 22 |  | SXST to DSS Conversion | 3d | 2017-02-12 | 2017-02-15 | 3 | 0d |
| 23 |  | Static Powerflow | 3d | 2017-02-15 | 2017-02-18 | 22 | 0d |
| 24 |  | Quasistatic Time Series | 3d | 2017-02-18 | 2017-02-21 | 23 | 0d |
| 25 |  | BES and PV | 7d | 2017-02-21 | 2017-02-28 | 24, 14 | 0d |
| 26 |  | BES Management Scheme | 7d | 2017-02-28 | 2017-03-07 | 25 | 0d |
| 27 | 2.4 | **Presentation** | 35d | 2017-03-07 | 2017-04-11 | 17 | 0d |
| 28 |  | CAPER Powerpoint | 7d | 2017-03-07 | 2017-03-14 |  | 28d |
| 29 |  | 496 Poster | 7d | 2017-04-04 | 2017-04-11 | 31 | 0d |
| 30 |  | 496 Video | 7d | 2017-04-04 | 2017-04-11 | 31 | 0d |
| 31 | 2.5 | **Hardware** | 28d | 2017-03-07 | 2017-04-04 | 21 | 0d |
| 32 |  | Design | 7d | 2017-03-07 | 2017-03-14 |  | 0d |
| 33 |  | Component Selection/Ordering | 7d | 2017-03-14 | 2017-03-21 | 32 | 0d |
| 34 |  | Build | 7d | 2017-03-21 | 2017-03-28 | 33 | 0d |
| 35 |  | Verification | 7d | 2017-03-28 | 2017-04-04 | 34 | 0d |
| 36 | 3 | **Fall** | 0d | 2017-01-26 | 2017-01-26 |  | 75d |
| 37 |  | Data | 0d | 2017-01-26 | 2017-01-26 |  | 75d |
| 38 |  | Research | 0d | 2017-01-26 | 2017-01-26 |  | 75d |
| 39 | 3.3 | **Model** | 0d | 2017-01-26 | 2017-01-26 |  | 75d |
| 40 | 3.3.1 | **Fall** | 0d | 2017-01-26 | 2017-01-26 |  | 75d |
| 41 |  | Performance Metrics | 0d | 2017-01-26 | 2017-01-26 |  | 75d |
| 42 |  | Optimal Location | 0d | 2017-01-26 | 2017-01-26 | 41 | 75d |
| 43 |  | Operational Efficiency | 0d | 2017-01-26 | 2017-01-26 | 42 | 75d |
| 44 | 3.4 | **Presentation** | 0d | 2017-01-26 | 2017-01-26 | 39 | 75d |
| 45 |  | CAPER Powerpoint | 0d | 2017-01-26 | 2017-01-26 |  | 75d |
| 46 |  | 496 Poster | 0d | 2017-01-26 | 2017-01-26 |  | 75d |
| 47 |  | 496 Video | 0d | 2017-01-26 | 2017-01-26 |  | 75d |
| 48 |  | Hardware | 0d | 2017-01-26 | 2017-01-26 |  | 75d |

## Version 2 (saved 2017-01-31)

Note of the change: ROX practice circuit

Last finish stays 2017-04-11.

Changed:

| ID | Task | Start | Finish | Duration | Total float |
| --- | --- | --- | --- | --- | --- |
| 18 | **Sample Circuit** |  | 2017-02-02 → 2017-02-07 (+5d) | 2d → 7d | 61d → 56d |
| 19 | Static Powerflow |  | 2017-02-01 → 2017-02-03 (+2d) | 1d → 3d | 61d → 56d |
| 20 | Quasistatic Time Series | 2017-02-01 → 2017-02-03 (+2d) | 2017-02-02 → 2017-02-07 (+5d) | 1d → 4d | 61d → 56d |

## Version 3 (saved 2017-02-06)

Last finish 2017-04-11 → 2017-04-13 (+2d).

Changed:

| ID | Task | Start | Finish | Duration | Total float |
| --- | --- | --- | --- | --- | --- |
| 2 | **Spring** |  | 2017-04-11 → 2017-04-13 (+2d) | 75d → 77d |  |
| 6 | **Research** |  | 2017-02-21 → 2017-02-23 (+2d) | 26d → 28d |  |
| 7 | **OpenDSS** |  | 2017-02-07 → 2017-02-09 (+2d) | 12d → 14d |  |
| 9 | Storage |  | 2017-02-07 → 2017-02-09 (+2d) | 7d → 9d |  |
| 10 | **BES Management Schemes** |  | 2017-02-07 → 2017-02-09 (+2d) | 7d → 9d |  |
| 11 | PV Firming |  | 2017-02-07 → 2017-02-09 (+2d) | 7d → 9d |  |
| 12 | Energy Time Shift |  | 2017-02-07 → 2017-02-09 (+2d) | 7d → 9d |  |
| 13 | Peak Demand Reduction |  | 2017-02-07 → 2017-02-09 (+2d) | 7d → 9d |  |
| 14 | **Batteries** | 2017-02-07 → 2017-02-09 (+2d) | 2017-02-21 → 2017-02-23 (+2d) |  |  |
| 15 | BES Technology | 2017-02-07 → 2017-02-09 (+2d) | 2017-02-21 → 2017-02-23 (+2d) |  |  |
| 16 | Price/Performance | 2017-02-07 → 2017-02-09 (+2d) | 2017-02-21 → 2017-02-23 (+2d) |  |  |
| 17 | **Model** |  | 2017-03-07 → 2017-03-09 (+2d) | 35d → 37d | 12d → 14d |
| 21 | **Actual Circuit** |  | 2017-03-07 → 2017-03-09 (+2d) | 23d → 25d |  |
| 25 | BES and PV | 2017-02-21 → 2017-02-23 (+2d) | 2017-02-28 → 2017-03-02 (+2d) |  |  |
| 26 | BES Management Scheme | 2017-02-28 → 2017-03-02 (+2d) | 2017-03-07 → 2017-03-09 (+2d) |  |  |
| 27 | **Presentation** | 2017-03-07 → 2017-03-09 (+2d) | 2017-04-11 → 2017-04-13 (+2d) |  |  |
| 28 | CAPER Powerpoint | 2017-03-07 → 2017-03-09 (+2d) | 2017-03-14 → 2017-03-16 (+2d) |  |  |
| 29 | 496 Poster | 2017-04-04 → 2017-04-06 (+2d) | 2017-04-11 → 2017-04-13 (+2d) |  |  |
| 30 | 496 Video | 2017-04-04 → 2017-04-06 (+2d) | 2017-04-11 → 2017-04-13 (+2d) |  |  |
| 31 | **Hardware** | 2017-03-07 → 2017-03-09 (+2d) | 2017-04-04 → 2017-04-06 (+2d) |  |  |
| 32 | Design | 2017-03-07 → 2017-03-09 (+2d) | 2017-03-14 → 2017-03-16 (+2d) |  |  |
| 33 | Component Selection/Ordering | 2017-03-14 → 2017-03-16 (+2d) | 2017-03-21 → 2017-03-23 (+2d) |  |  |
| 34 | Build | 2017-03-21 → 2017-03-23 (+2d) | 2017-03-28 → 2017-03-30 (+2d) |  |  |
| 35 | Verification | 2017-03-28 → 2017-03-30 (+2d) | 2017-04-04 → 2017-04-06 (+2d) |  |  |
